How a schedule from MS Project changed from version to version. A marks actual dates.

## Version 1 (saved 2024-04-28)

Note of the change: init

| ID | Task | Duration | Start | Finish | Predecessors | Total float |
| --- | --- | --- | --- | --- | --- | --- |
| 1 | Подготовительные работы | 10d | 2009-11-16 | 2009-11-27 |  | 0d |
| 2 | Планировка площадей | 1d | 2009-11-30 | 2009-11-30 | 1 | 0d |
| 3 | Прочие и неучтенные общестроительные работы | 5d | 2009-11-30 | 2009-12-04 | 1 | 69d |
| 4 | Разработка грунта в отвал в котлованах | 1d | 2009-12-01 | 2009-12-01 | 2 | 0d |
| 5 | Укладка фундаментов под колонны | 7d | 2009-12-02 | 2009-12-10 | 4 | 0d |
| 6 | Укладка ригелей | 1d | 2009-12-11 | 2009-12-11 | 5 | 0d |
| 7 | Сантехнические работы 1-я стадия | 5d | 2009-12-11 | 2009-12-17 | 5 | 77d |
| 8 | Электромонтажные работы 1 стадия | 5d | 2009-12-11 | 2009-12-17 | 5 | 77d |
| 9 | Установка диафрагм жесткости | 8d | 2009-12-14 | 2009-12-23 | 6 | 0d |
| 10 | Укладка ригелей | 3d | 2009-12-14 | 2009-12-16 | 6 | 8d |
| 11 | Установка колонн прямоугольного сечения в стаканы фундаментов зданий | 7d | 2009-12-24 | 2010-01-01 | 9 | 0d |
| 12 | Укладка плит перекрытий | 7d | 2010-01-04 | 2010-01-12 | 11 | 1d |
| 13 | Укладка блоков и плит ленточных фундаментов | 3d | 2010-01-13 | 2010-01-15 | 12 | 4d |
| 14 | Установка перегородок из гипсовых плит | 2d | 2010-01-18 | 2010-01-19 | 13 | 4d |
| 15 | Укладка перемычек | 4d | 2010-01-20 | 2010-01-25 | 14 | 4d |
| 16 | Устройство кровель | 2d | 2010-01-26 | 2010-01-27 | 15 | 6d |
| 17 | Устройство лестничных маршей в опалубке | 3d | 2010-01-28 | 2010-02-01 | 16 | 6d |
| 18 | Установка диафрагм жесткости | 4d | 2009-12-24 | 2009-12-29 | 10, 9 | 3d |
| 19 | Установка колонн прямоугольного сечения в стаканы фундаментов зданий | 8d | 2010-01-04 | 2010-01-13 | 18, 11 | 0d |
| 20 | Укладка плит перекрытий | 6d | 2010-01-14 | 2010-01-21 | 19, 12 | 0d |
| 21 | Укладка блоков и плит ленточных фундаментов | 5d | 2010-01-22 | 2010-01-28 | 20, 13 | 0d |
| 22 | Установка перегородок из гипсовых плит | 1d | 2010-01-29 | 2010-01-29 | 21, 14 | 0d |
| 23 | Укладка перемычек | 5d | 2010-02-01 | 2010-02-05 | 22, 15 | 0d |
| 24 | Устройство кровель | 2d | 2010-02-08 | 2010-02-09 | 23, 16 | 0d |
| 25 | Устройство лестничных маршей в опалубке | 3d | 2010-02-10 | 2010-02-12 | 24, 17 | 0d |
| 26 | Устройство полов бетонных толщиной | 5d | 2010-02-15 | 2010-02-19 | 25 | 0d |
| 27 | Сантехнические работы 2-я стадия | 4d | 2010-02-15 | 2010-02-18 | 25 | 22d |
| 28 | Электромонтажные работы 2 стадия | 4d | 2010-02-15 | 2010-02-18 | 25 | 22d |
| 29 | Устройство покрытий | 2d | 2010-02-22 | 2010-02-23 | 26 | 1d |
| 30 | Устройство покрытий на цементном растворе из плиток | 3d | 2010-02-24 | 2010-02-26 | 29 | 1d |
| 31 | Установка в жилых и общественных зданиях блоков оконных с переплетами | 4d | 2010-03-01 | 2010-03-04 | 30 | 1d |
| 32 | Установка деревянных дверных блоков | 2d | 2010-03-05 | 2010-03-08 | 31 | 1d |
| 33 | Установка деревянных подоконных досок в каменных стенах | 1d | 2010-03-09 | 2010-03-09 | 32 | 1d |
| 34 | Устройство полов бетонных толщиной | 5d | 2010-02-22 | 2010-02-26 | 26 | 0d |
| 35 | Устройство покрытий | 2d | 2010-03-01 | 2010-03-02 | 34, 29 | 0d |
| 36 | Устройство покрытий на цементном растворе из плиток | 3d | 2010-03-03 | 2010-03-05 | 35, 30 | 0d |
| 37 | Установка в жилых и общественных зданиях блоков оконных с переплетами | 2d | 2010-03-08 | 2010-03-09 | 36, 31 | 0d |
| 38 | Установка деревянных дверных блоков | 1d | 2010-03-10 | 2010-03-10 | 37, 32 | 0d |
| 39 | Установка деревянных подоконных досок в каменных стенах | 1d | 2010-03-11 | 2010-03-11 | 38, 33 | 0d |
| 40 | Монтаж оборудования | 7d | 2010-03-12 | 2010-03-22 | 39 | 0d |
| 41 | Дороги, подъезды тротуары | 5d | 2010-03-23 | 2010-03-29 | 40, 27, 28 | 0d |
| 42 | Озеленение | 1d | 2010-03-30 | 2010-03-30 | 41 | 0d |
| 43 | Пусконаладочные работы | 3d | 2010-03-31 | 2010-04-02 | 42, 3 | 0d |
| 44 | Ввод в эксплуатацию | 1d | 2010-04-05 | 2010-04-05 | 43 | 0d |

## Version 2 (saved 2024-05-07)

Note of the change: закончил

Last finish stays 2010-04-05.

Changed:

| ID | Task | Start | Other |
| --- | --- | --- | --- |
| 2 | Планировка площадей |  | resources none → Бульдозеры при работе на других видах строительства 79 кВт (108 л.с.); Автогрейдеры среднего типа 99 кВт(135 л.с.); Затраты труда машинистов (справочно, входит в стоимость ЭМ) |
| 4 | Разработка грунта в отвал в котлованах |  | resources none → Экскаваторы одноковшовые дизельные на гусеничном ходу при работе на других видах строительства 0,5 м3; Затраты труда машинистов (справочно, входит в стоимость ЭМ) |
| 5 | Укладка фундаментов под колонны |  | resources none → Конструкции сборные железобетонные [17.32 шт.]; Песок для строительных работ природный [6.84 м3]; Краны на гусеничном ходу при работе на других видах строительства 25 т; Автопогрузчики 5 т; Компрессоры передвижные с двигателем внутреннего сгорания давлением до 686 кПа(7 ат), производительность 5 м3/мин; Трамбовки пневматические при работе от передвижных компрессорных станций; Тягачи седельные, грузоподъемность 15 т; Полуприцепы-тяжеловозы, грузоподъемность 40 т; Затраты труда рабочих-строителей Разряд 3,4; Затраты труда машинистов (справочно, входит в стоимость ЭМ) |
| 6 | Укладка ригелей | 2009-12-11 → 2009-12-10 (-1d) | resources none → Проволока горячекатаная в мотках, диаметром 6,3-6,5 мм; Смазка солидол жировой марки <Ж>; Электроды диаметром 6 мм Э42; Доски обрезные хвойных пород длиной 4-6,5 м, шириной 75-150 мм, толщиной 32-40 мм, IV сорта; Бетон [0.02 м3]; Конструкции сборные железобетонные [1.39 шт.]; Краны на гусеничном ходу при работе на других видах строительства 40 т; Установки для сварки ручной дуговой(постоянного тока); Вибратор глубинный; Автомобили бортовые, грузоподъемность до 5 т; Тягачи седельные, грузоподъемность 15 т; Полуприцепы-тяжеловозы, грузоподъемность 40 т; Затраты труда рабочих-строителей Разряд 3,8; Затраты труда машинистов (справочно, входит в стоимость ЭМ) |
| 9 | Установка диафрагм жесткости | 2009-12-14 → 2009-12-11 (-3d) | resources none → Ацетилен растворенный технический марки А; Кислород технический газообразный [1.22 м3]; Поковки из квадратных заготовок, масса 2,825 кг; Проволока наплавочная диаметром 3 мм ПП-Нп-19СТ; Электроды диаметром 6 мм Э42 [0.05 т]; Болты с гайками и шайбами строительные [0.02 т]; Гвозди строительные; Лесоматериалы круглые хвойных пород для выработки пиломатериалов и заготовок (пластины) толщиной 20-24 см, III сорта [0.07 м3]; Доски обрезные хвойных пород длиной 4-6,5 м, шириной 75-150 мм, толщиной 44 мм и более, II сорта [0.28 м3]; Конструктивные элементы вспомогательного назначения с преобладанием профильного проката собираемые из двух и более деталей, с отверстиями и без отверстий, соединяемые на сварке [0.81 т]; Бетон [4.97 м3]; Раствор готовый кладочный цементный марки 200 [0.44 м3]; Конструкции сборные железобетонные [23.54 шт.]; Краны башенные при работе на других видах строительства 8 т; Установки для сварки ручной дуговой(постоянного тока); Аппарат для газовой сварки и резки; Вибратор глубинный; Автомобили бортовые, грузоподъемность до 5 т; Затраты труда рабочих-строителей Разряд 4,2; Затраты труда машинистов (справочно, входит в стоимость ЭМ) |
| 10 | Укладка ригелей | 2009-12-14 → 2009-12-11 (-3d) | resources none → Проволока горячекатаная в мотках, диаметром 6,3-6,5 мм; Смазка солидол жировой марки <Ж>; Электроды диаметром 6 мм Э42 [0.02 т]; Доски обрезные хвойных пород длиной 4-6,5 м, шириной 75-150 мм, толщиной 32-40 мм, IV сорта [0.04 м3]; Бетон [0.42 м3]; Конструкции сборные железобетонные [24.27 шт.]; Краны на гусеничном ходу при работе на других видах строительства 40 т; Установки для сварки ручной дуговой(постоянного тока); Вибратор глубинный; Автомобили бортовые, грузоподъемность до 5 т; Тягачи седельные, грузоподъемность 15 т; Полуприцепы-тяжеловозы, грузоподъемность 40 т; Затраты труда рабочих-строителей Разряд 3,8; Затраты труда машинистов (справочно, входит в стоимость ЭМ) |
| 11 | Установка колонн прямоугольного сечения в стаканы фундаментов зданий |  | resources none → Доски обрезные хвойных пород длиной 2-3,75 м, шириной 75-150 мм, толщиной 44 мм и более, II сорта [0.14 м3]; Бетон [4.64 м3]; Конструкции сборные железобетонные [43 шт.]; Краны на гусеничном ходу при работе на других видах строительства 25 т; Вибратор глубинный; Автомобили бортовые, грузоподъемность до 5 т; Тягачи седельные, грузоподъемность 15 т; Полуприцепы-тяжеловозы, грузоподъемность 40 т; Затраты труда рабочих-строителей Разряд 3,7; Затраты труда машинистов (справочно, входит в стоимость ЭМ) |
| 12 | Укладка плит перекрытий |  | resources none → Проволока горячекатаная в мотках, диаметром 6,3-6,5 мм [0.06 т]; Рубероид подкладочный с пылевидной посыпкой РПП-300б [148.33 м2]; Смазка солидол жировой марки <Ж> [0.01 т]; Электроды диаметром 6 мм Э42 [0.05 т]; Доски обрезные хвойных пород длиной 4-6,5 м, шириной 75-150 мм, толщиной 32-40 мм, IV сорта [1.28 м3]; Конструктивные элементы вспомогательного назначения с преобладанием профильного проката собираемые из двух и более деталей, с отверстиями и без отверстий, соединяемые на сварке [0.39 т]; Горячекатаная арматурная сталь гладкая класса А-I, диаметром 14 мм [0.03 т]; Бетон [31.78 м3]; Конструкции сборные железобетонные [151.35 шт.]; Краны на гусеничном ходу при работе на других видах строительства 40 т; Установки для сварки ручной дуговой(постоянного тока); Автомобили бортовые, грузоподъемность до 5 т; Затраты труда рабочих-строителей Разряд 3,6; Затраты труда машинистов (справочно, входит в стоимость ЭМ) |
| 13 | Укладка блоков и плит ленточных фундаментов |  | resources none → Конструкции сборные железобетонные [43 шт.]; Песок для строительных работ природный [16.98 м3]; Краны на гусеничном ходу при работе на других видах строительства 25 т; Автопогрузчики 5 т; Компрессоры передвижные с двигателем внутреннего сгорания давлением до 686 кПа(7 ат), производительность 5 м3/мин; Трамбовки пневматические при работе от стационарного компрессора; Тягачи седельные, грузоподъемность 15 т; Полуприцепы-тяжеловозы, грузоподъемность 40 т; Затраты труда рабочих-строителей Разряд 3,6; Затраты труда машинистов (справочно, входит в стоимость ЭМ) |
| 14 | Установка перегородок из гипсовых плит | 2010-01-18 → 2010-01-15 (-3d) | resources none → Гвозди проволочные круглые формовочные 1,6х100 мм; Поковки из квадратных заготовок, масса 1,8 кг [0.01 т]; Толь с крупнозернистой посыпкой марки ТВК-350 [9.72 м2]; Плиты гипсовые толщиной до 100 мм [147.42 м2]; Бруски обрезные хвойных пород длиной 4-6,5 м, шириной 75-150 мм, толщиной 40-75 мм, III сорта [0.16 м3]; Горячекатаная арматурная сталь класс а А-I [0.02 т]; Гипсовые вяжущие, марка Г3 [0.92 т]; Песок для строительных работ природный [0.97 м3]; Вода [0.39 м3]; Краны башенные при работе на других видах строительства 8 т; Автомобили бортовые, грузоподъемность до 5 т; Затраты труда рабочих-строителей Разряд 3,6; Затраты труда машинистов (справочно, входит в стоимость ЭМ) |
| 15 | Укладка перемычек |  | resources none → Раствор готовый кладочный цементный марки 50 [0.2 м3]; Конструкции сборные железобетонные [62 шт.]; Краны башенные при работе на других видах строительства 10 т; Затраты труда рабочих-строителей Разряд 3,2; Затраты труда машинистов (справочно, входит в стоимость ЭМ) |
| 16 | Устройство кровель | 2010-01-26 → 2010-01-25 (-1d) | resources none → Мастика битумная кровельная горячая [4.45 т]; Материалы рулонные кровельные [1624.54 м2]; Симазин 50%-ный порошок смачивающийся; Гравий для строительных работ, фракция 5 -10 мм [3.71 м3]; Краны башенные при работе на других видах строительства 8 т; Краны на автомобильном ходу при работе на других видах строительства 10 т; Автопогрузчики 5 т; Котлы битумные передвижные 400 л; Автомобили бортовые, грузоподъемность до 5 т; Затраты труда рабочих-строителей Разряд 3,8; Затраты труда машинистов (справочно, входит в стоимость ЭМ) |
| 17 | Устройство лестничных маршей в опалубке | 2010-01-28 → 2010-01-27 (-1d) | resources none → Масла антраценовые; Проволока светлая диаметром 1,1 мм; Электроды диаметром 4 мм Э42; Рогожа [0.86 м2]; Гвозди строительные; Опалубка переставная(амортизация); Опалубка типа<Дока> (конструкции металлические); Палуба опалубки типа<Дока> из бакелизированной фанеры [0.58 м2]; Бруски обрезные хвойных пород длиной 4-6,5 м, шириной 75-150 мм, толщиной 40-75 мм, III сорта [0.02 м3]; Доски обрезные хвойных пород длиной 4-6,5 м, шириной 75-150 мм, толщиной 25 мм, III сорта; Доски обрезные хвойных пород длиной 4-6,5 м, шириной 75-150 мм, толщиной 44 мм и более, III сорта [0.02 м3]; Арматура [0.31 т]; Бетон тяжелый [2.03 м3]; Вода; Краны башенные при работе на других видах строительства 8 т; Краны на автомобильном ходу при работе на других видах строительства 10 т; Автопогрузчики 5 т; Установки для сварки ручной дуговой(постоянного тока); Вибратор поверхностный; Пила цепная электрическая; Автомобили бортовые, грузоподъемность до 8 т; Затраты труда рабочих-строителей Разряд 3,1; Затраты труда машинистов (справочно, входит в стоимость ЭМ) |
| 18 | Установка диафрагм жесткости | 2009-12-24 → 2009-12-23 (-1d) | resources none → Ацетилен растворенный технический марки А; Кислород технический газообразный [1.18 м3]; Поковки из квадратных заготовок, масса 2,825 кг; Проволока наплавочная диаметром 3 мм ПП-Нп-19СТ; Электроды диаметром 6 мм Э42 [0.05 т]; Болты с гайками и шайбами строительные [0.02 т]; Гвозди строительные; Лесоматериалы круглые хвойных пород для выработки пиломатериалов и заготовок (пластины) толщиной 20-24 см, III сорта [0.07 м3]; Доски обрезные хвойных пород длиной 4-6,5 м, шириной 75-150 мм, толщиной 44 мм и более, II сорта [0.27 м3]; Конструктивные элементы вспомогательного назначения с преобладанием профильного проката собираемые из двух и более деталей, с отверстиями и без отверстий, соединяемые на сварке [0.78 т]; Бетон [4.78 м3]; Раствор готовый кладочный цементный марки 200 [0.42 м3]; Конструкции сборные железобетонные [22.66 шт.]; Краны башенные при работе на других видах строительства 8 т; Установки для сварки ручной дуговой(постоянного тока); Аппарат для газовой сварки и резки; Вибратор глубинный; Автомобили бортовые, грузоподъемность до 5 т; Затраты труда рабочих-строителей Разряд 4,2; Затраты труда машинистов (справочно, входит в стоимость ЭМ) |
| 19 | Установка колонн прямоугольного сечения в стаканы фундаментов зданий |  | resources none → Доски обрезные хвойных пород длиной 2-3,75 м, шириной 75-150 мм, толщиной 44 мм и более, II сорта [0.11 м3]; Бетон [3.67 м3]; Конструкции сборные железобетонные [34 шт.]; Краны на гусеничном ходу при работе на других видах строительства 25 т; Вибратор глубинный; Автомобили бортовые, грузоподъемность до 5 т; Тягачи седельные, грузоподъемность 15 т; Полуприцепы-тяжеловозы, грузоподъемность 40 т; Затраты труда рабочих-строителей Разряд 3,7; Затраты труда машинистов (справочно, входит в стоимость ЭМ) |
| 20 | Укладка плит перекрытий |  | resources none → Проволока горячекатаная в мотках, диаметром 6,3-6,5 мм [0.04 т]; Рубероид подкладочный с пылевидной посыпкой РПП-300б [95.16 м2]; Смазка солидол жировой марки <Ж> [0.01 т]; Электроды диаметром 6 мм Э42 [0.03 т]; Доски обрезные хвойных пород длиной 4-6,5 м, шириной 75-150 мм, толщиной 32-40 мм, IV сорта [0.82 м3]; Конструктивные элементы вспомогательного назначения с преобладанием профильного проката собираемые из двух и более деталей, с отверстиями и без отверстий, соединяемые на сварке [0.25 т]; Горячекатаная арматурная сталь гладкая класса А-I, диаметром 14 мм [0.02 т]; Бетон [20.39 м3]; Конструкции сборные железобетонные [97.1 шт.]; Краны на гусеничном ходу при работе на других видах строительства 40 т; Установки для сварки ручной дуговой(постоянного тока); Автомобили бортовые, грузоподъемность до 5 т; Затраты труда рабочих-строителей Разряд 3,6; Затраты труда машинистов (справочно, входит в стоимость ЭМ) |
| 21 | Укладка блоков и плит ленточных фундаментов |  | resources none → Конструкции сборные железобетонные [21 шт.]; Песок для строительных работ природный [8.29 м3]; Краны на гусеничном ходу при работе на других видах строительства 25 т; Автопогрузчики 5 т; Компрессоры передвижные с двигателем внутреннего сгорания давлением до 686 кПа(7 ат), производительность 5 м3/мин; Трамбовки пневматические при работе от стационарного компрессора; Тягачи седельные, грузоподъемность 15 т; Полуприцепы-тяжеловозы, грузоподъемность 40 т; Затраты труда рабочих-строителей Разряд 3,6; Затраты труда машинистов (справочно, входит в стоимость ЭМ) |
| 22 | Установка перегородок из гипсовых плит | 2010-01-29 → 2010-01-28 (-1d) | resources none → Гвозди проволочные круглые формовочные 1,6х100 мм; Поковки из квадратных заготовок, масса 1,8 кг; Толь с крупнозернистой посыпкой марки ТВК-350 [4.5 м2]; Плиты гипсовые толщиной до 100 мм [68.25 м2]; Бруски обрезные хвойных пород длиной 4-6,5 м, шириной 75-150 мм, толщиной 40-75 мм, III сорта [0.07 м3]; Горячекатаная арматурная сталь класс а А-I [0.01 т]; Гипсовые вяжущие, марка Г3 [0.43 т]; Песок для строительных работ природный [0.45 м3]; Вода [0.18 м3]; Краны башенные при работе на других видах строительства 8 т; Автомобили бортовые, грузоподъемность до 5 т; Затраты труда рабочих-строителей Разряд 3,6; Затраты труда машинистов (справочно, входит в стоимость ЭМ) |
| 23 | Укладка перемычек |  | resources none → Раствор готовый кладочный цементный марки 50 [0.1 м3]; Конструкции сборные железобетонные [30 шт.]; Краны башенные при работе на других видах строительства 10 т; Затраты труда рабочих-строителей Разряд 3,2; Затраты труда машинистов (справочно, входит в стоимость ЭМ) |
| 24 | Устройство кровель | 2010-02-08 → 2010-02-05 (-3d) | resources none → Мастика битумная кровельная горячая [4.28 т]; Материалы рулонные кровельные [1563.26 м2]; Симазин 50%-ный порошок смачивающийся; Гравий для строительных работ, фракция 5 -10 мм [3.57 м3]; Краны башенные при работе на других видах строительства 8 т; Краны на автомобильном ходу при работе на других видах строительства 10 т; Автопогрузчики 5 т; Котлы битумные передвижные 400 л; Автомобили бортовые, грузоподъемность до 5 т; Затраты труда рабочих-строителей Разряд 3,8; Затраты труда машинистов (справочно, входит в стоимость ЭМ) |
| 26 | Устройство полов бетонных толщиной |  | resources none → Доски обрезные хвойных пород длиной 2-3,75 м, шириной 75-150 мм, толщиной 25 мм, IV сорта [0.21 м3]; Бетон тяжелый [36.02 м3]; Вода [1.77 м3]; Комплексы вакуумные типа СО-177; Затраты труда рабочих-строителей Разряд 4; Затраты труда машинистов (справочно, входит в стоимость ЭМ) |
| 29 | Устройство покрытий |  | resources none → Клей <Бустилат> [0.18 т]; Ветошь [1.77 кг]; Линолеум на теплозвукоизолирующей подоснове [360.22 м2]; Подъемники грузоподъемностью до 500 кг одномачтовые, высота подъема 45 м; Автомобили бортовые, грузоподъемность до 5 т; Затраты труда рабочих-строителей Разряд 2,7; Затраты труда машинистов (справочно, входит в стоимость ЭМ) |
| 30 | Устройство покрытий на цементном растворе из плиток |  | resources none → Опилки древесные [5.4 м3]; Плитки керамические для полов гладкие неглазурованные многоцветные квадратные и прямоугольные [180.11 м2]; Раствор готовый кладочный тяжелый цементный [2.3 м3]; Вода [6.8 м3]; Автопогрузчики 5 т; Подъемники грузоподъемностью до 500 кг одномачтовые, высота подъема 45 м; Автомобили бортовые, грузоподъемность до 5 т; Затраты труда рабочих-строителей Разряд 3,2; Затраты труда машинистов (справочно, входит в стоимость ЭМ) |
| 31 | Установка в жилых и общественных зданиях блоков оконных с переплетами | 2010-03-01 → 2010-02-26 (-3d) | resources none → Гвозди толевые круглые 3,0х40 мм; Смола каменноугольная для дорожного строительства [0.05 т]; Толь с крупнозернистой посыпкой гидроизоляционный марки ТГ-350 [177 м2]; Гвозди строительные; Пена монтажная [77.85 л]; Скобяные изделия; Шурупы строительные [0.02 т]; Блоки оконные [150 м2]; Раствор готовый отделочный тяжелый, известковый 1:2,0 [0.21 м3]; Гипсовые вяжущие, марка Г3 [0.04 т]; Краны башенные при работе на других видах строительства 8 т; Краны на автомобильном ходу при работе на других видах строительства 10 т; Котлы битумные передвижные 400 л; Шуруповерт; Автомобили бортовые, грузоподъемность до 5 т; Затраты труда рабочих-строителей Разряд 3,4; Затраты труда машинистов (справочно, входит в стоимость ЭМ) |
| 32 | Установка деревянных дверных блоков | 2010-03-05 → 2010-03-04 (-1d) | resources none → Гвозди строительные; Скобяные изделия; Блоки дверные [180 м2]; Краны на автомобильном ходу при работе на других видах строительства 10 т; Автомобили бортовые, грузоподъемность до 5 т; Затраты труда рабочих-строителей Разряд 3,2; Затраты труда машинистов (справочно, входит в стоимость ЭМ) |
| 33 | Установка деревянных подоконных досок в каменных стенах | 2010-03-09 → 2010-03-08 (-1d) | resources none → Смола каменноугольная для дорожного строительства; Войлок строительный [0.04 т]; Толь с крупнозернистой посыпкой гидроизоляционный марки ТГ-350 [4.46 м2]; Гвозди строительные; Натрий фтористый технический, марка А, сорт I; Доски подоконные деревянные [59.2 метры]; Раствор готовый отделочный тяжелый, известковый 1:3 [0.27 м3]; Гипсовые вяжущие, марка Г3 [0.24 т]; Вода [0.48 м3]; Краны башенные при работе на других видах строительства 8 т; Котлы битумные передвижные 400 л; Автомобили бортовые, грузоподъемность до 5 т; Затраты труда рабочих-строителей Разряд 3,1; Затраты труда машинистов (справочно, входит в стоимость ЭМ) |
| 34 | Устройство полов бетонных толщиной |  | resources none → Доски обрезные хвойных пород длиной 2-3,75 м, шириной 75-150 мм, толщиной 25 мм, IV сорта [0.2 м3]; Бетон тяжелый [34.66 м3]; Вода [1.7 м3]; Комплексы вакуумные типа СО-177; Затраты труда рабочих-строителей Разряд 4; Затраты труда машинистов (справочно, входит в стоимость ЭМ) |
| 35 | Устройство покрытий |  | resources none → Клей <Бустилат> [0.17 т]; Ветошь [1.7 кг]; Линолеум на теплозвукоизолирующей подоснове [346.64 м2]; Подъемники грузоподъемностью до 500 кг одномачтовые, высота подъема 45 м; Автомобили бортовые, грузоподъемность до 5 т; Затраты труда рабочих-строителей Разряд 2,7; Затраты труда машинистов (справочно, входит в стоимость ЭМ) |
| 36 | Устройство покрытий на цементном растворе из плиток |  | resources none → Опилки древесные [10.4 м3]; Плитки керамические для полов гладкие неглазурованные многоцветные квадратные и прямоугольные [346.64 м2]; Раствор готовый кладочный тяжелый цементный [4.42 м3]; Вода [13.08 м3]; Автопогрузчики 5 т; Подъемники грузоподъемностью до 500 кг одномачтовые, высота подъема 45 м; Автомобили бортовые, грузоподъемность до 5 т; Затраты труда рабочих-строителей Разряд 3,2; Затраты труда машинистов (справочно, входит в стоимость ЭМ) |
| 37 | Установка в жилых и общественных зданиях блоков оконных с переплетами | 2010-03-08 → 2010-03-05 (-3d) | resources none → Гвозди толевые круглые 3,0х40 мм; Смола каменноугольная для дорожного строительства [0.02 т]; Толь с крупнозернистой посыпкой гидроизоляционный марки ТГ-350 [88.5 м2]; Гвозди строительные; Пена монтажная [38.92 л]; Скобяные изделия; Шурупы строительные [0.01 т]; Блоки оконные [75 м2]; Раствор готовый отделочный тяжелый, известковый 1:2,0 [0.1 м3]; Гипсовые вяжущие, марка Г3 [0.02 т]; Краны башенные при работе на других видах строительства 8 т; Краны на автомобильном ходу при работе на других видах строительства 10 т; Котлы битумные передвижные 400 л; Шуруповерт; Автомобили бортовые, грузоподъемность до 5 т; Затраты труда рабочих-строителей Разряд 3,4; Затраты труда машинистов (справочно, входит в стоимость ЭМ) |
| 38 | Установка деревянных дверных блоков | 2010-03-10 → 2010-03-09 (-1d) | resources none → Гвозди строительные; Скобяные изделия; Блоки дверные [90 м2]; Краны на автомобильном ходу при работе на других видах строительства 10 т; Автомобили бортовые, грузоподъемность до 5 т; Затраты труда рабочих-строителей Разряд 3,2; Затраты труда машинистов (справочно, входит в стоимость ЭМ) |
| 39 | Установка деревянных подоконных досок в каменных стенах | 2010-03-11 → 2010-03-10 (-1d) | resources none → Смола каменноугольная для дорожного строительства; Войлок строительный; Толь с крупнозернистой посыпкой гидроизоляционный марки ТГ-350 [0.56 м2]; Гвозди строительные; Натрий фтористый технический, марка А, сорт I; Доски подоконные деревянные [7.4 метры]; Раствор готовый отделочный тяжелый, известковый 1:3 [0.03 м3]; Гипсовые вяжущие, марка Г3 [0.03 т]; Вода [0.06 м3]; Краны башенные при работе на других видах строительства 8 т; Котлы битумные передвижные 400 л; Автомобили бортовые, грузоподъемность до 5 т; Затраты труда рабочих-строителей Разряд 3,1; Затраты труда машинистов (справочно, входит в стоимость ЭМ) |
